# Smart HomeCare Schedule

Schedule from MS Project, 2013-10-01 to 2013-12-31, A marks actual dates.

## Calendars

- Standard: Mon-Fri 08:00-12:00, 13:00-17:00; Sat-Sun off.

## Resources

| Resource |
| --- |
| Phong Huynh |
| Chi Bui |
| Ric Ly |
| Tuan Nguyen |
| Tin Nguyen |
| MINT |
| HCM |
| US |

## Schedule

| ID | WBS | Task | Type | Duration | Start | Finish | Complete | Remaining | Total slack | Constraint | Resources | Work | Actual work |
| --- | --- | --- | --- | --- | --- | --- | --- | --- | --- | --- | --- | --- | --- |
| 1 | 1 | **Development Iteration 1** |  | 14d? | 2013-10-01 A | 2013-10-18 | 88% | 1.68d? | 52d |  |  | 1204h | 1053.87h |
| 2 | 1.1 | Review functional specifications |  | 2d | 2013-10-01 A | 2013-10-02 A | 100% |  |  | start no earlier than 2013-10-01 |  |  |  |
| 3 | 1.2 | Identify modular design parameter |  | 2d | 2013-10-03 A | 2013-10-04 A | 100% |  |  | start no earlier than 2013-10-03 |  |  |  |
| 4 | 1.3 | Assign development staff | milestone | 0d | 2013-10-04 A | 2013-10-04 A | 100% |  |  | start no earlier than 2013-10-04 |  |  |  |
| 5 | 1.4 | **Develop code (Web service)** |  | 8.5d? | 2013-10-04 A | 2013-10-16 | 87% | 1.1d? | 54d |  |  | 1204h | 1053.87h |
| 6 | 1.4.1 | **UNREGISTERED USER** |  | 2.5d? | 2013-10-04 A | 2013-10-08 A | 100% |  |  |  | Phong Huynh | 152h | 152h |
| 7 | 1.4.1.1 | **101 Public page** |  | 2.5d | 2013-10-04 A | 2013-10-08 A | 100% |  |  |  | Phong Huynh | 44h | 44h |
| 8 | 1.4.1.1.1 | Sign in function |  | 1d | 2013-10-08 A | 2013-10-08 A | 100% |  |  |  | Phong Huynh | 8h | 8h |
| 9 | 1.4.1.1.2 | Forgot username function |  | 1d | 2013-10-04 A | 2013-10-07 A | 100% |  |  |  | Phong Huynh | 8h | 8h |
| 10 | 1.4.1.1.3 | Forgot Password function |  | 1d | 2013-10-04 A | 2013-10-07 A | 100% |  |  |  | Phong Huynh | 8h | 8h |
| 11 | 1.4.1.2 | **102 Forgot username page** |  | 2.5d? | 2013-10-04 A | 2013-10-08 A | 100% |  |  |  | Phong Huynh | 36h | 36h |
| 12 | 1.4.1.2.1 | Submit function |  | 1d? | 2013-10-04 A | 2013-10-07 A | 100% |  |  |  | Phong Huynh | 8h | 8h |
| 13 | 1.4.1.2.2 | Send Email to user |  | 1d? | 2013-10-08 A | 2013-10-08 A | 100% |  |  |  | Phong Huynh | 8h | 8h |
| 14 | 1.4.1.3 | **103 Forgot password page** |  | 2.5d? | 2013-10-04 A | 2013-10-08 A | 100% |  |  |  | Phong Huynh | 36h | 36h |
| 15 | 1.4.1.3.1 | Submit function |  | 1d? | 2013-10-04 A | 2013-10-07 A | 100% |  |  |  | Phong Huynh | 8h | 8h |
| 16 | 1.4.1.3.2 | Send Email to user |  | 1d? | 2013-10-08 A | 2013-10-08 A | 100% |  |  |  | Phong Huynh | 8h | 8h |
| 17 | 1.4.1.4 | **104 Register page** |  | 1d? | 2013-10-04 A | 2013-10-07 A | 100% |  |  |  | Phong Huynh | 16h | 16h |
| 18 | 1.4.1.4.1 | Submit function |  | 1d? | 2013-10-04 A | 2013-10-07 A | 100% |  |  |  | Phong Huynh | 8h | 8h |
| 19 | 1.4.2 | Done Unregistered User | milestone | 0d | 2013-10-15 A | 2013-10-15 A | 100% |  |  | start no earlier than 2013-10-15 |  |  |  |
| 20 | 1.4.3 | **REGISTERED USER** |  | 7.5d? | 2013-10-04 A | 2013-10-15 A | 100% |  |  |  | Phong Huynh | 436h | 436h |
| 21 | 1.4.3.1 | **201 Home page** |  | 1d | 2013-10-15 A | 2013-10-15 A | 100% |  |  |  | Phong Huynh | 24h | 24h |
| 22 | 1.4.3.1.1 | New Alarm Notification |  | 1d | 2013-10-15 A | 2013-10-15 A | 100% |  |  | start no earlier than 2013-10-15 | Phong Huynh | 8h | 8h |
| 23 | 1.4.3.1.2 | New Message Notification |  | 1d | 2013-10-15 A | 2013-10-15 A | 100% |  |  | start no earlier than 2013-10-15 | Phong Huynh | 8h | 8h |
| 24 | 1.4.3.2 | **MY PROFILE MENU** |  | 1d? | 2013-10-15 A | 2013-10-15 A | 100% |  |  |  | Phong Huynh | 104h | 104h |
| 25 | 1.4.3.2.1 | **202 User Information page** |  | 1d? | 2013-10-15 A | 2013-10-15 A | 100% |  |  |  | Phong Huynh | 32h | 32h |
| 26 | 1.4.3.2.1.1 | Show user info |  | 1d? | 2013-10-15 A | 2013-10-15 A | 100% |  |  | start no earlier than 2013-10-15 | Phong Huynh | 8h | 8h |
| 27 | 1.4.3.2.1.2 | Edit info |  | 1d? | 2013-10-15 A | 2013-10-15 A | 100% |  |  | start no earlier than 2013-10-15 | Phong Huynh | 8h | 8h |
| 28 | 1.4.3.2.1.3 | Save info |  | 1d? | 2013-10-15 A | 2013-10-15 A | 100% |  |  | start no earlier than 2013-10-15 | Phong Huynh | 8h | 8h |

| ID | WBS | Task | Duration | Start | Finish | Complete | Constraint | Resources | Work | Actual work |
| --- | --- | --- | --- | --- | --- | --- | --- | --- | --- | --- |
| 29 | 1.4.3.2.2 | **203 Change password page** | 1d? | 2013-10-15 A | 2013-10-15 A | 100% |  | Phong Huynh | 24h | 24h |
| 30 | 1.4.3.2.2.1 | Save function | 1d? | 2013-10-15 A | 2013-10-15 A | 100% | start no earlier than 2013-10-15 | Phong Huynh | 8h | 8h |
| 31 | 1.4.3.2.2.2 | Notification | 1d? | 2013-10-15 A | 2013-10-15 A | 100% | start no earlier than 2013-10-15 | Phong Huynh | 8h | 8h |
| 32 | 1.4.3.2.3 | **204 Authorized page** | 1d? | 2013-10-15 A | 2013-10-15 A | 100% |  | Phong Huynh | 40h | 40h |
| 33 | 1.4.3.2.3.1 | List all authorized user | 1d? | 2013-10-15 A | 2013-10-15 A | 100% | start no earlier than 2013-10-15 | Phong Huynh | 8h | 8h |
| 34 | 1.4.3.2.3.2 | Delete a user | 1d? | 2013-10-15 A | 2013-10-15 A | 100% | start no earlier than 2013-10-15 | Phong Huynh | 8h | 8h |
| 35 | 1.4.3.2.3.3 | Add an authorized user | 1d? | 2013-10-15 A | 2013-10-15 A | 100% | start no earlier than 2013-10-15 | Phong Huynh | 8h | 8h |
| 36 | 1.4.3.2.3.4 | Invite new member | 1d? | 2013-10-15 A | 2013-10-15 A | 100% | start no earlier than 2013-10-15 | Phong Huynh | 8h | 8h |
| 37 | 1.4.3.3 | **REPORT** | 2.5d? | 2013-10-04 A | 2013-10-08 A | 100% |  |  | 116h | 116h |
| 38 | 1.4.3.3.1 | **205 Track my health page** | 2d? | 2013-10-04 A | 2013-10-08 A | 100% |  |  | 76h | 76h |
| 39 | 1.4.3.3.1.1 | **206 Feature 1: Temperature Tracking** | 2d? | 2013-10-04 A | 2013-10-08 A | 100% |  | Chi Bui | 44h | 44h |
| 40 | 1.4.3.3.1.1.1 | 2061 Graph Report page | 0.5d? | 2013-10-04 A | 2013-10-04 A | 100% |  | Chi Bui | 4h | 4h |
| 41 | 1.4.3.3.1.1.2 | 2062 Table Report page | 0.5d? | 2013-10-04 A | 2013-10-04 A | 100% |  | Chi Bui | 4h | 4h |
| 42 | 1.4.3.3.1.1.3 | Diagnosis and Recommendation section | 0.5d? | 2013-10-08 A | 2013-10-08 A | 100% |  | Chi Bui | 4h | 4h |
| 43 | 1.4.3.3.1.1.4 | **Temperature settings** | 0.5d? | 2013-10-04 A | 2013-10-04 A | 100% |  | Ric Ly | 16h | 16h |
| 44 | 1.4.3.3.1.1.4.1 | See settings | 0.5d? | 2013-10-04 A | 2013-10-04 A | 100% |  | Ric Ly | 4h | 4h |
| 45 | 1.4.3.3.1.1.4.2 | Edit settings | 0.5d? | 2013-10-04 A | 2013-10-04 A | 100% |  | Ric Ly | 4h | 4h |
| 46 | 1.4.3.3.1.1.4.3 | Save parameters | 0.5d? | 2013-10-04 A | 2013-10-04 A | 100% |  | Ric Ly | 4h | 4h |
| 47 | 1.4.3.3.1.2 | **207 Global Setting** | 1d? | 2013-10-04 A | 2013-10-07 A | 100% |  | Ric Ly | 32h | 32h |
| 48 | 1.4.3.3.1.2.1 | Show settings | 1d? | 2013-10-04 A | 2013-10-07 A | 100% |  | Ric Ly | 8h | 8h |
| 49 | 1.4.3.3.1.2.2 | Edit settings | 1d? | 2013-10-04 A | 2013-10-07 A | 100% |  | Ric Ly | 8h | 8h |
| 50 | 1.4.3.3.1.2.3 | Save setting | 1d? | 2013-10-04 A | 2013-10-07 A | 100% |  | Ric Ly | 8h | 8h |
| 51 | 1.4.3.3.2 | **209 Track Other page** | 1d? | 2013-10-08 A | 2013-10-08 A | 100% |  |  | 40h | 40h |
| 52 | 1.4.3.3.2.1 | List granted users | 0.5d? | 2013-10-08 A | 2013-10-08 A | 100% |  | Ric Ly | 4h | 4h |
| 53 | 1.4.3.3.2.2 | Select users to view | 0.5d? | 2013-10-08 A | 2013-10-08 A | 100% |  | Ric Ly | 4h | 4h |

| ID | WBS | Task | Type | Duration | Start | Finish | Complete | Constraint | Resources | Work | Actual work |
| --- | --- | --- | --- | --- | --- | --- | --- | --- | --- | --- | --- |
| 54 | 1.4.3.3.2.3 | **210 Track Other Features page** |  | 0.5d? | 2013-10-08 A | 2013-10-08 A | 100% |  | Ric Ly | 8h | 8h |
| 55 | 1.4.3.3.2.3.1 | Select a feature to view report |  | 0.5d? | 2013-10-08 A | 2013-10-08 A | 100% |  | Ric Ly | 4h | 4h |
| 56 | 1.4.3.3.2.4 | **211 Other Temperature Tracking Report page** |  | 0.5d? | 2013-10-08 A | 2013-10-08 A | 100% |  | Ric Ly | 16h | 16h |
| 57 | 1.4.3.3.2.4.1 | 2111 Other Graph report |  | 0.5d? | 2013-10-08 A | 2013-10-08 A | 100% |  | Ric Ly | 4h | 4h |
| 58 | 1.4.3.3.2.4.2 | 2112 Other table report |  | 0.5d? | 2013-10-08 A | 2013-10-08 A | 100% |  | Ric Ly | 4h | 4h |
| 59 | 1.4.3.3.2.4.3 | 2113 Other Temperature setting page |  | 0.5d? | 2013-10-08 A | 2013-10-08 A | 100% |  | Ric Ly | 4h | 4h |
| 60 | 1.4.3.3.2.5 | 212 Other Settting page |  | 1d? | 2013-10-08 A | 2013-10-08 A | 100% |  | Ric Ly | 8h | 8h |
| 61 | 1.4.3.4 | **MESSAGE CENTER** |  | 0.5d? | 2013-10-04 A | 2013-10-04 A | 100% |  | Chi Bui | 44h | 44h |
| 62 | 1.4.3.4.1 | Compose Message |  | 0.5d? | 2013-10-04 A | 2013-10-04 A | 100% |  | Chi Bui | 4h | 4h |
| 63 | 1.4.3.4.2 | Send Message function |  | 0.5d? | 2013-10-04 A | 2013-10-04 A | 100% |  | Chi Bui | 4h | 4h |
| 64 | 1.4.3.4.3 | **213 Inbox page** |  | 0.5d? | 2013-10-04 A | 2013-10-04 A | 100% |  | Chi Bui | 16h | 16h |
| 65 | 1.4.3.4.3.1 | Show inbox list |  | 0.5d? | 2013-10-04 A | 2013-10-04 A | 100% |  | Chi Bui | 4h | 4h |
| 66 | 1.4.3.4.3.2 | Delete message |  | 0.5d? | 2013-10-04 A | 2013-10-04 A | 100% |  | Chi Bui | 4h | 4h |
| 67 | 1.4.3.4.3.3 | Inbox list pages |  | 0.5d? | 2013-10-04 A | 2013-10-04 A | 100% |  | Chi Bui | 4h | 4h |
| 68 | 1.4.3.4.4 | **214 Sent Message pagge** |  | 0.5d? | 2013-10-04 A | 2013-10-04 A | 100% |  | Chi Bui | 16h | 16h |
| 69 | 1.4.3.4.4.1 | Show sent list |  | 0.5d? | 2013-10-04 A | 2013-10-04 A | 100% |  | Chi Bui | 4h | 4h |
| 70 | 1.4.3.4.4.2 | Delete Message |  | 0.5d? | 2013-10-04 A | 2013-10-04 A | 100% |  | Chi Bui | 4h | 4h |
| 71 | 1.4.3.4.4.3 | Sent List pages |  | 0.5d? | 2013-10-04 A | 2013-10-04 A | 100% |  | Chi Bui | 4h | 4h |
| 72 | 1.4.3.5 | **BILLING ACCOUNT** |  | 1d | 2013-10-14 A | 2013-10-14 A | 100% |  | Ric Ly | 88h | 88h |
| 73 | 1.4.3.5.1 | **216 Billing Account Summary page** |  | 1d | 2013-10-14 A | 2013-10-14 A | 100% |  | Ric Ly | 80h | 80h |
| 74 | 1.4.3.5.1.1 | List of Account |  | 1d | 2013-10-14 A | 2013-10-14 A | 100% | finish no earlier than 2013-10-14 | Ric Ly | 8h | 8h |
| 75 | 1.4.3.5.1.2 | 2161 Account Details page |  | 1d | 2013-10-14 A | 2013-10-14 A | 100% | finish no earlier than 2013-10-14 | Ric Ly | 8h | 8h |
| 76 | 1.4.3.5.1.3 | list of Paydate/transaction |  | 1d | 2013-10-14 A | 2013-10-14 A | 100% | finish no earlier than 2013-10-14 | Ric Ly | 8h | 8h |
| 77 | 1.4.3.5.1.4 | 2162 Payment information page |  | 1d | 2013-10-14 A | 2013-10-14 A | 100% | finish no earlier than 2013-10-14 | Ric Ly | 8h | 8h |
| 78 | 1.4.3.5.1.5 | List of paid date |  | 1d | 2013-10-14 A | 2013-10-14 A | 100% | finish no earlier than 2013-10-14 | Ric Ly | 8h | 8h |
| 79 | 1.4.3.5.1.6 | 2163 Pay bill page |  | 1d | 2013-10-14 A | 2013-10-14 A | 100% | finish no earlier than 2013-10-14 | Ric Ly | 8h | 8h |
| 80 | 1.4.3.5.1.7 | Payment submit function |  | 1d | 2013-10-14 A | 2013-10-14 A | 100% | finish no earlier than 2013-10-14 | Ric Ly | 8h | 8h |
| 81 | 1.4.3.5.1.8 | 2164 Payment Review page |  | 1d | 2013-10-14 A | 2013-10-14 A | 100% | finish no earlier than 2013-10-14 | Ric Ly | 8h | 8h |
| 82 | 1.4.3.5.1.9 | 2165 Payment Receipt page |  | 1d | 2013-10-14 A | 2013-10-14 A | 100% | finish no earlier than 2013-10-14 | Ric Ly | 8h | 8h |
| 83 | 1.4.4 | Done Registered User | milestone | 0d | 2013-10-15 A | 2013-10-15 A | 100% | start no earlier than 2013-10-15 |  |  |  |

| ID | WBS | Task | Duration | Start | Finish | Complete | Remaining | Total slack | Constraint | Resources | Work | Actual work |
| --- | --- | --- | --- | --- | --- | --- | --- | --- | --- | --- | --- | --- |
| 84 | 1.4.5 | **ADMINISTRATIVE USER** | 2d? | 2013-10-14 A | 2013-10-15 | 61% | 0.77d? | 55d |  | Phong Huynh; Ric Ly; Chi Bui | 360h | 209.87h |
| 85 | 1.4.5.1 | **301 User management page** | 2d? | 2013-10-14 A | 2013-10-15 | 94% | 0.11d? | 55d |  | Phong Huynh | 168h | 159.11h |
| 86 | 1.4.5.1.1 | add new user | 2d | 2013-10-14 A | 2013-10-15 | 50% | 1d | 55d | start no earlier than 2013-10-14 | Phong Huynh | 16h | 8h |
| 87 | 1.4.5.1.2 | List users | 2d | 2013-10-14 A | 2013-10-15 A | 100% |  |  | start no earlier than 2013-10-14 | Phong Huynh | 16h | 16h |
| 88 | 1.4.5.1.3 | Active user | 2d | 2013-10-14 A | 2013-10-15 A | 100% |  |  | start no earlier than 2013-10-14 | Phong Huynh | 16h | 16h |
| 89 | 1.4.5.1.4 | Deactivate user | 2d | 2013-10-14 A | 2013-10-15 A | 100% |  |  | start no earlier than 2013-10-14 | Phong Huynh | 16h | 16h |
| 90 | 1.4.5.1.5 | **3011 User management Details page** | 1d? | 2013-10-15 A | 2013-10-15 A | 100% |  |  |  | Ric Ly | 88h | 88h |
| 91 | 1.4.5.1.5.1 | View user overview | 1d? | 2013-10-15 A | 2013-10-15 A | 100% |  |  | start no earlier than 2013-10-15 | Ric Ly | 8h | 8h |
| 92 | 1.4.5.1.5.2 | View user profile | 1d? | 2013-10-15 A | 2013-10-15 A | 100% |  |  | start no earlier than 2013-10-15 | Ric Ly | 8h | 8h |
| 93 | 1.4.5.1.5.3 | view user preference | 1d? | 2013-10-15 A | 2013-10-15 A | 100% |  |  | start no earlier than 2013-10-15 | Ric Ly | 8h | 8h |
| 94 | 1.4.5.1.5.4 | view user groups | 1d? | 2013-10-15 A | 2013-10-15 A | 100% |  |  | start no earlier than 2013-10-15 | Ric Ly | 8h | 8h |
| 95 | 1.4.5.1.5.5 | view user permission | 1d? | 2013-10-15 A | 2013-10-15 A | 100% |  |  | start no earlier than 2013-10-15 | Ric Ly | 8h | 8h |
| 96 | 1.4.5.1.5.6 | edit user overview | 1d? | 2013-10-15 A | 2013-10-15 A | 100% |  |  | start no earlier than 2013-10-15 | Ric Ly | 8h | 8h |
| 97 | 1.4.5.1.5.7 | edit user profile | 1d? | 2013-10-15 A | 2013-10-15 A | 100% |  |  | start no earlier than 2013-10-15 | Ric Ly | 8h | 8h |
| 98 | 1.4.5.1.5.8 | edit user preference | 1d? | 2013-10-15 A | 2013-10-15 A | 100% |  |  | start no earlier than 2013-10-15 | Ric Ly | 8h | 8h |
| 99 | 1.4.5.1.5.9 | edit user group | 1d? | 2013-10-15 A | 2013-10-15 A | 100% |  |  | start no earlier than 2013-10-15 | Ric Ly | 8h | 8h |
| 100 | 1.4.5.1.5.10 | edit user permission | 1d? | 2013-10-15 A | 2013-10-15 A | 100% |  |  | start no earlier than 2013-10-15 | Ric Ly | 8h | 8h |
| 101 | 1.4.5.2 | **REPORT** | 2d | 2013-10-14 | 2013-10-15 |  |  | 55d |  |  | 16h |  |
| 102 | 1.4.5.2.1 | 302 Statistic page | 2d | 2013-10-14 | 2013-10-15 |  |  | 55d | start no earlier than 2013-10-14 | Chi Bui | 16h |  |
| 103 | 1.4.5.3 | **LOG** | 2d | 2013-10-14 A | 2013-10-15 | 33% | 1.33d | 55d |  | Phong Huynh | 64h | 21.33h |
| 104 | 1.4.5.3.1 | 303 Webadmin Logs page | 2d | 2013-10-14 A | 2013-10-15 A | 100% |  |  | start no earlier than 2013-10-14 | Phong Huynh | 16h | 16h |
| 105 | 1.4.5.3.2 | 304 Sync Logs page | 2d | 2013-10-14 | 2013-10-15 |  |  | 55d | start no earlier than 2013-10-14 | Phong Huynh | 16h |  |
| 106 | 1.4.5.3.3 | 305 System tools page | 2d | 2013-10-14 | 2013-10-15 |  |  | 55d | start no earlier than 2013-10-14 | Phong Huynh | 16h |  |
| 107 | 1.4.5.4 | **MESSAGE CENTER** | 2d | 2013-10-14 | 2013-10-15 |  |  | 55d |  | Ric Ly | 40h |  |
| 108 | 1.4.5.4.1 | 306 Inbox page | 2d | 2013-10-14 | 2013-10-15 |  |  | 55d | start no earlier than 2013-10-14 | Ric Ly | 16h |  |
| 109 | 1.4.5.4.2 | 307 Sent Messages page | 1d | 2013-10-14 | 2013-10-14 |  |  | 56d | start no earlier than 2013-10-14 | Ric Ly | 8h |  |

| ID | WBS | Task | Type | Duration | Start | Finish | Complete | Total slack | Constraint | Resources | Work | Actual work |
| --- | --- | --- | --- | --- | --- | --- | --- | --- | --- | --- | --- | --- |
| 110 | 1.4.5.5 | **308 My acccount page** |  | 1d | 2013-10-14 | 2013-10-14 |  | 56d |  | Ric Ly | 24h |  |
| 111 | 1.4.5.5.1 | View user info |  | 1d | 2013-10-14 | 2013-10-14 |  | 56d | start no earlier than 2013-10-14 | Ric Ly | 8h |  |
| 112 | 1.4.5.5.2 | Edit user info |  | 1d | 2013-10-14 | 2013-10-14 |  | 56d | start no earlier than 2013-10-14 | Ric Ly | 8h |  |
| 113 | 1.4.6 | Done Admin User | milestone | 0d | 2013-10-16 A | 2013-10-16 A | 100% |  | start no earlier than 2013-10-16 |  |  |  |
| 114 | 1.4.7 | **GENERAL FUNCTIONS** |  | 7d? | 2013-10-08 A | 2013-10-16 A | 100% |  |  |  | 256h | 256h |
| 115 | 1.4.7.1 | Log out function |  | 2d | 2013-10-14 A | 2013-10-15 A | 100% |  | start no earlier than 2013-10-14 | Phong Huynh | 16h | 16h |
| 116 | 1.4.7.2 | 105 FAQs page |  | 1d? | 2013-10-08 A | 2013-10-08 A | 100% |  |  | Phong Huynh | 8h | 8h |
| 117 | 1.4.7.3 | 106 Privacy Policy page |  | 1d? | 2013-10-08 A | 2013-10-08 A | 100% |  |  | Phong Huynh | 8h | 8h |
| 118 | 1.4.7.4 | 107 Terms and Conditions page |  | 1d? | 2013-10-08 A | 2013-10-08 A | 100% |  |  | Phong Huynh | 8h | 8h |
| 119 | 1.4.7.5 | Site map page |  | 2d | 2013-10-14 A | 2013-10-16 A | 100% |  | start no earlier than 2013-10-14 | Ric Ly | 16h | 16h |
| 120 | 1.4.7.6 | **WEBADMIN CMS** |  | 6d? | 2013-10-09 A | 2013-10-16 A | 100% |  |  | Ric Ly; Phong Huynh | 200h | 200h |
| 121 | 1.4.7.6.1 | Parameter defines |  | 5d? | 2013-10-09 A | 2013-10-15 A | 100% |  | start no earlier than 2013-10-09 | Ric Ly | 40h | 40h |
| 122 | 1.4.7.6.2 | Message Notification defines |  | 6d? | 2013-10-09 A | 2013-10-16 A | 100% |  | start no earlier than 2013-10-09 | Ric Ly | 48h | 48h |
| 123 | 1.4.7.6.3 | Email Notification defines |  | 2d? | 2013-10-15 A | 2013-10-16 A | 100% |  |  | Ric Ly | 16h | 16h |
| 124 | 1.4.7.7 | Done Webadmin CMS | milestone | 0d | 2013-10-16 A | 2013-10-16 A | 100% |  | start no earlier than 2013-10-16 |  |  |  |
| 125 | 1.5 | Developer testing ( Debug) |  | 3d | 2013-10-16 A | 2013-10-18 A | 100% |  | start no earlier than 2013-10-21 |  |  |  |
| 126 | 2 | Development complete | milestone | 0d | 2013-10-18 | 2013-10-18 |  | 53d | start no earlier than 2013-10-18 |  |  |  |
| 127 | 3 | **Additional requirements for Iteration1** |  | 13d? | 2013-10-11 A | 2013-10-29 A | 100% |  |  |  | 200h | 200h |
| 128 | 3.1 | **Trash for Message Center** |  | 4d? | 2013-10-11 A | 2013-10-16 A | 100% |  |  |  | 24h | 24h |
| 129 | 3.1.1 | Develop |  | 3d? | 2013-10-11 A | 2013-10-15 A | 100% |  | start no earlier than 2013-10-11 | Ric Ly | 24h | 24h |
| 130 | 3.1.2 | Testing |  | 1d? | 2013-10-16 A | 2013-10-16 A | 100% |  | start no earlier than 2013-10-16 |  |  |  |
| 131 | 3.2 | Done Trash | milestone | 0d | 2013-10-16 A | 2013-10-16 A | 100% |  | start no earlier than 2013-10-16 |  |  |  |
| 132 | 3.3 | **Registration Code** |  | 6d? | 2013-10-11 A | 2013-10-18 A | 100% |  |  |  | 40h | 40h |
| 133 | 3.3.1 | Design database |  | 2d? | 2013-10-11 A | 2013-10-14 A | 100% |  | finish no earlier than 2013-10-14 | Tuan Nguyen | 16h | 16h |
| 134 | 3.3.2 | Coding |  | 3d? | 2013-10-16 A | 2013-10-18 A | 100% |  | finish no earlier than 2013-10-18 | Phong Huynh | 24h | 24h |
| 135 | 3.4 | Done Registration Code | milestone | 0d | 2013-10-22 A | 2013-10-22 A | 100% |  | start no earlier than 2013-10-22 |  |  |  |

Notes:
- 116: Chưa có nội dung
- 117: Chưa có nội dung
- 118: Chưa có nội dung
- 120: Provide a tool to: / + Edit message notification > will used multilanguage websites / allows translator to translate message in website to other languages / + Edit Email notification > send to endusers / allows other party to change the content of each kind of email sent to endusers
- 132: Requirements Changed

| ID | WBS | Task | Type | Duration | Start | Finish | Complete | Remaining | Total slack | Constraint | Resources | Work | Actual work |
| --- | --- | --- | --- | --- | --- | --- | --- | --- | --- | --- | --- | --- | --- |
| 136 | 3.5 | **Temperature Fomula** |  | 4d? | 2013-10-17 A | 2013-10-22 A | 100% |  |  |  |  | 96h | 96h |
| 137 | 3.5.1 | Temperature: Define threatholds |  | 4d? | 2013-10-17 A | 2013-10-22 A | 100% |  |  | finish no earlier than 2013-10-22 | Tuan Nguyen | 32h | 32h |
| 138 | 3.5.2 | Show recommendations |  | 4d? | 2013-10-17 A | 2013-10-22 A | 100% |  |  | finish no earlier than 2013-10-22 | Tuan Nguyen | 32h | 32h |
| 139 | 3.5.3 | Apply function for user/authorized user |  | 4d? | 2013-10-17 A | 2013-10-22 A | 100% |  |  | finish no earlier than 2013-10-22 | Tuan Nguyen | 32h | 32h |
| 140 | 3.6 | Done Temperature fomula | milestone | 0d | 2013-10-22 A | 2013-10-22 A | 100% |  |  | start no earlier than 2013-10-22 |  |  |  |
| 141 | 3.7 | Admin Billing Management |  | 2d? | 2013-10-23 A | 2013-10-24 A | 100% |  |  | finish no earlier than 2013-10-24 | Ric Ly | 16h | 16h |
| 142 | 3.8 | Done Admin Billing Management | milestone | 0d | 2013-10-24 A | 2013-10-24 A | 100% |  |  | start no earlier than 2013-10-24 |  |  |  |
| 143 | 3.9 | **Log-in** |  | 1d | 2013-10-15 A | 2013-10-15 A | 100% |  |  |  |  | 16h | 16h |
| 144 | 3.9.1 | Log: Last login success |  | 1d | 2013-10-15 A | 2013-10-15 A | 100% |  |  | start no earlier than 2013-10-15 | Phong Huynh | 8h | 8h |
| 145 | 3.9.2 | Log: Last logout |  | 1d | 2013-10-15 A | 2013-10-15 A | 100% |  |  | start no earlier than 2013-10-15 | Phong Huynh | 8h | 8h |
| 146 | 3.10 | **Message Popup Notification** |  | 2d? | 2013-10-28 A | 2013-10-29 A | 100% |  |  |  |  | 8h | 8h |
| 147 | 3.10.1 | Design a template |  | 1d? | 2013-10-28 A | 2013-10-28 A | 100% |  |  | start no earlier than 2013-10-28 | Ric Ly | 8h | 8h |
| 148 | 3.10.2 | Replace message notification on every page |  | 1d? | 2013-10-29 A | 2013-10-29 A | 100% |  |  | start no earlier than 2013-10-29 |  |  |  |
| 149 | 3.11 | Done Message Notification | milestone | 0d | 2013-10-29 A | 2013-10-29 A | 100% |  |  | start no earlier than 2013-10-29 |  |  |  |
| 150 | 3.12 | **Build stage version for customer review** |  | 2d? | 2013-10-28 A | 2013-10-29 A | 100% |  |  |  |  |  |  |
| 151 | 3.12.1 | setup invironment for new server |  | 1d? | 2013-10-28 A | 2013-10-28 A | 100% |  |  | start no earlier than 2013-10-28 |  |  |  |
| 152 | 3.12.2 | upload website/database |  | 1d? | 2013-10-29 A | 2013-10-29 A | 100% |  |  | start no earlier than 2013-10-29 |  |  |  |
| 153 | 3.12.3 | publish |  | 1d? | 2013-10-29 A | 2013-10-29 A | 100% |  |  | start no earlier than 2013-10-29 |  |  |  |
| 154 | 4 | **Testing iteration 1** |  | 30d? | 2013-10-21 A | 2013-11-29 | 95% | 1.5d? | 22d |  |  | 144h | 144h |
| 155 | 4.1 | **Unit Test** |  | 21d | 2013-10-21 A | 2013-11-18 A | 100% |  |  |  |  |  |  |
| 156 | 4.1.1 | Develop Unit test plan |  | 5d | 2013-10-21 A | 2013-10-25 A | 100% |  |  | start no earlier than 2013-10-21 |  |  |  |
| 157 | 4.1.2 | Review modular code |  | 3d | 2013-10-28 A | 2013-10-30 A | 100% |  |  | start no earlier than 2013-10-28 |  |  |  |
| 158 | 4.1.3 | Test component modules |  | 3d | 2013-10-31 A | 2013-11-04 A | 100% |  |  | start no earlier than 2013-10-31 |  |  |  |
| 159 | 4.1.4 | Identify anomalies |  | 2d | 2013-11-05 A | 2013-11-06 A | 100% |  |  | start no earlier than 2013-11-05 |  |  |  |
| 160 | 4.1.5 | Modify code |  | 5d | 2013-11-07 A | 2013-11-13 A | 100% |  |  | start no earlier than 2013-11-07 |  |  |  |
| 161 | 4.1.6 | Retest modified code |  | 2d | 2013-11-15 A | 2013-11-18 A | 100% |  |  | start no earlier than 2013-11-15 |  |  |  |
| 162 | 4.2 | Unit testing complete | milestone | 0d | 2013-11-18 | 2013-11-18 |  |  | 25d | start no earlier than 2013-11-18 |  |  |  |

Notes:
- 146: Control the Dialog box, not letting browsers control it. / Confirmation box/ infomation box

| ID | WBS | Task | Type | Duration | Start | Finish | Predecessors | Complete | Remaining | Total slack | Constraint | Resources | Work | Actual work |
| --- | --- | --- | --- | --- | --- | --- | --- | --- | --- | --- | --- | --- | --- | --- |
| 163 | 4.3 | **Intergration/Function test** |  | 21d? | 2013-11-01 A | 2013-11-29 |  | 90% | 2.1d? | 22d |  |  | 144h | 144h |
| 164 | 4.3.1 | Develop Intergration test plan/test suite |  | 13d | 2013-11-01 A | 2013-11-19 A |  | 100% |  |  | finish no earlier than 2013-11-19 | Tin Nguyen | 104h | 104h |
| 165 | 4.3.2 | Testing |  | 3d? | 2013-11-21 A | 2013-11-25 A |  | 100% |  |  | finish no earlier than 2013-11-25 | Ric Ly | 24h | 24h |
| 166 | 4.3.3 | Bug fix |  | 2d? | 2013-11-26 A | 2013-11-27 A | 165 | 100% |  |  |  | Ric Ly | 16h | 16h |
| 167 | 4.3.4 | Retest fixed bugs |  | 2d? | 2013-11-28 | 2013-11-29 | 166 |  |  | 15d | start no earlier than 2013-11-27 |  |  |  |
| 168 | 4.4 | Done Intergration/Function test | milestone | 0d | 2013-11-29 | 2013-11-29 |  |  |  | 16d | start no earlier than 2013-11-29 |  |  |  |
| 169 | 5 | **Development iteration 2** |  | 30d? | 2013-10-24 A | 2013-12-04 |  | 2% | 29.49d? | 19d |  |  | 1152h |  |
| 170 | 5.1 | Review functional specifications |  | 2d | 2013-10-24 A | 2013-10-25 A | 126 | 100% |  |  | start no earlier than 2013-10-24 |  |  |  |
| 171 | 5.2 | **Identify Design parameter** |  | 3d? | 2013-10-28 A | 2013-10-30 A |  | 100% |  |  |  |  |  |  |
| 172 | 5.2.1 | List website page |  | 1d? | 2013-10-28 A | 2013-10-28 A |  | 100% |  |  | start no earlier than 2013-10-28 |  |  |  |
| 173 | 5.2.2 | Define functions in page |  | 2d? | 2013-10-28 A | 2013-10-29 A |  | 100% |  |  | finish no earlier than 2013-10-29 |  |  |  |
| 174 | 5.2.3 | Build web layout for 8 features |  | 3d? | 2013-10-28 A | 2013-10-30 A |  | 100% |  |  | finish no earlier than 2013-10-30 |  |  |  |
| 175 | 5.2.4 | Build different layout of chart and table |  | 2d? | 2013-10-29 A | 2013-10-30 A |  | 100% |  |  | finish no earlier than 2013-10-30 |  |  |  |
| 176 | 5.3 | Assign development staff | milestone | 0d | 2013-10-30 A | 2013-10-30 A |  | 100% |  |  | start no earlier than 2013-10-30 |  |  |  |
| 177 | 5.4 | **Develop code** |  | 24d | 2013-11-01 | 2013-12-04 |  |  |  | 19d |  |  | 1152h |  |
| 178 | 5.4.1 | **Feature 2: Body Measurement** |  | 24d | 2013-11-01 | 2013-12-04 |  |  |  | 19d |  |  | 576h |  |
| 179 | 5.4.1.1 | Graph Report |  | 24d | 2013-11-01 | 2013-12-04 |  |  |  | 12d | finish no earlier than 2013-12-04 | Chi Bui | 192h |  |
| 180 | 5.4.1.2 | Table Report |  | 24d | 2013-11-01 | 2013-12-04 |  |  |  | 12d | finish no earlier than 2013-12-04 | Ric Ly | 192h |  |
| 181 | 5.4.1.3 | Settings |  | 24d | 2013-11-01 | 2013-12-04 |  |  |  | 12d | finish no earlier than 2013-12-04 | Phong Huynh | 192h |  |
| 182 | 5.4.2 | **Feature 3: Hear Rate** |  | 24d | 2013-11-01 | 2013-12-04 |  |  |  | 19d |  |  | 576h |  |
| 183 | 5.4.2.1 | Graph Report |  | 24d | 2013-11-01 | 2013-12-04 |  |  |  | 12d | finish no earlier than 2013-12-04 | Chi Bui | 192h |  |
| 184 | 5.4.2.2 | Table Report |  | 24d | 2013-11-01 | 2013-12-04 |  |  |  | 12d | finish no earlier than 2013-12-04 | Ric Ly | 192h |  |
| 185 | 5.4.2.3 | Settings |  | 24d | 2013-11-01 | 2013-12-04 |  |  |  | 12d | finish no earlier than 2013-12-04 | Phong Huynh | 192h |  |
| 186 | 5.4.3 | **Feature 4: Oxygen** |  | 24d | 2013-11-01 | 2013-12-04 |  |  |  | 19d |  |  |  |  |
| 187 | 5.4.3.1 | Graph Report |  | 24d | 2013-11-01 | 2013-12-04 |  |  |  | 12d | start no earlier than 2013-11-01 |  |  |  |
| 188 | 5.4.3.2 | Table report |  | 24d | 2013-11-01 | 2013-12-04 |  |  |  | 12d | start no earlier than 2013-11-01 |  |  |  |
| 189 | 5.4.3.3 | Settings |  | 24d | 2013-11-01 | 2013-12-04 |  |  |  | 12d | start no earlier than 2013-11-01 |  |  |  |

Notes:
- 177: 8 features / Each feature content: / + Graph report / + Tabe report / + Settings / + Clone this feature using for Trach Others

| ID | WBS | Task | Type | Duration | Start | Finish | Predecessors | Total slack | Constraint |
| --- | --- | --- | --- | --- | --- | --- | --- | --- | --- |
| 190 | 5.4.4 | **Feature 5: Fitness** |  | 24d | 2013-11-01 | 2013-12-04 |  | 19d |  |
| 191 | 5.4.4.1 | Graphic Report |  | 24d | 2013-11-01 | 2013-12-04 |  | 12d | start no earlier than 2013-11-01 |
| 192 | 5.4.4.2 | Table Report |  | 24d | 2013-11-01 | 2013-12-04 |  | 12d | start no earlier than 2013-11-01 |
| 193 | 5.4.4.3 | Settings |  | 24d | 2013-11-01 | 2013-12-04 |  | 12d | start no earlier than 2013-11-01 |
| 194 | 5.4.5 | **Feature 6: Stress** |  | 24d | 2013-11-01 | 2013-12-04 |  | 19d |  |
| 195 | 5.4.5.1 | Graphic report |  | 24d | 2013-11-01 | 2013-12-04 |  | 12d | start no earlier than 2013-11-01 |
| 196 | 5.4.5.2 | Table report |  | 24d | 2013-11-01 | 2013-12-04 |  | 12d | start no earlier than 2013-11-01 |
| 197 | 5.4.5.3 | Settings |  | 24d | 2013-11-01 | 2013-12-04 |  | 12d | start no earlier than 2013-11-01 |
| 198 | 5.4.6 | **Feature 7: Sleep** |  | 24d | 2013-11-01 | 2013-12-04 |  | 19d |  |
| 199 | 5.4.6.1 | Graphic report |  | 24d | 2013-11-01 | 2013-12-04 |  | 12d | start no earlier than 2013-11-01 |
| 200 | 5.4.6.2 | Table report |  | 24d | 2013-11-01 | 2013-12-04 |  | 12d | start no earlier than 2013-11-01 |
| 201 | 5.4.6.3 | Settings |  | 24d | 2013-11-01 | 2013-12-04 |  | 12d | start no earlier than 2013-11-01 |
| 202 | 5.4.7 | **Feature 8: Position** |  | 24d | 2013-11-01 | 2013-12-04 |  | 19d |  |
| 203 | 5.4.7.1 | Graphic report |  | 24d | 2013-11-01 | 2013-12-04 |  | 12d | start no earlier than 2013-11-01 |
| 204 | 5.4.7.2 | Table report |  | 24d | 2013-11-01 | 2013-12-04 |  | 12d | start no earlier than 2013-11-01 |
| 205 | 5.4.7.3 | Settings |  | 24d | 2013-11-01 | 2013-12-04 |  | 12d | start no earlier than 2013-11-01 |
| 206 | 5.4.8 | **Feature 9: Fertility** |  | 24d | 2013-11-01 | 2013-12-04 | 202 | 19d |  |
| 207 | 5.4.8.1 | Graphic report |  | 24d | 2013-11-01 | 2013-12-04 |  | 12d | start no earlier than 2013-11-01 |
| 208 | 5.4.8.2 | Table Report |  | 24d | 2013-11-01 | 2013-12-04 |  | 19d | start no earlier than 2013-11-01 |
| 209 | 5.4.8.3 | Settings |  | 24d | 2013-11-01 | 2013-12-04 |  | 19d | start no earlier than 2013-11-01 |
| 210 | 5.5 | Developer testing (debug) |  | 3d | 2013-12-02 | 2013-12-04 |  | 19d | start no earlier than 2013-12-02 |
| 211 | 6 | Development complete | milestone | 0d | 2013-12-05 | 2013-12-05 |  | 8d | start no earlier than 2013-12-05 |
| 212 | 7 | **Testing iteration 2** |  | 30d? | 2013-11-20 | 2013-12-31 |  | 0d |  |
| 213 | 7.1 | **Unite Test** |  | 19d | 2013-11-20 | 2013-12-16 |  | 11d |  |
| 214 | 7.1.1 | Develop unit test plans |  | 19d | 2013-11-20 | 2013-12-16 |  | 11d | finish no earlier than 2013-12-16 |
| 215 | 7.1.2 | Review modular code |  | 19d | 2013-11-20 | 2013-12-16 |  | 11d | start no earlier than 2013-11-20 |
| 216 | 7.1.3 | Test component modules |  | 19d | 2013-11-20 | 2013-12-16 |  | 11d | start no earlier than 2013-11-20 |
| 217 | 7.1.4 | Identify anomalies |  | 19d | 2013-11-20 | 2013-12-16 |  | 11d | start no earlier than 2013-11-20 |
| 218 | 7.1.5 | Modify code |  | 19d | 2013-11-20 | 2013-12-16 |  | 11d | start no earlier than 2013-11-20 |
| 219 | 7.1.6 | Retest modified code |  | 19d | 2013-11-20 | 2013-12-16 |  | 11d | start no earlier than 2013-11-20 |
| 220 | 7.2 | Unit Testing complete | milestone | 0d | 2013-12-16 | 2013-12-16 |  | 12d | start no earlier than 2013-12-16 |

| ID | WBS | Task | Duration | Start | Finish | Complete | Remaining | Total slack | Constraint | Resources | Work | Actual work |
| --- | --- | --- | --- | --- | --- | --- | --- | --- | --- | --- | --- | --- |
| 221 | 7.3 | **Intergration/Function test** | 28d? | 2013-11-20 | 2013-12-27 |  |  | 2d |  |  |  |  |
| 222 | 7.3.1 | Build test cases | 5d? | 2013-12-09 | 2013-12-13 |  |  | 12d | start no earlier than 2013-12-09 |  |  |  |
| 223 | 7.3.2 | Build test suites/test plan | 5d? | 2013-12-09 | 2013-12-13 |  |  | 12d | finish no earlier than 2013-12-13 |  |  |  |
| 224 | 7.3.3 | Testing | 3d? | 2013-12-23 | 2013-12-25 |  |  | 4d | finish no earlier than 2013-12-25 |  |  |  |
| 225 | 7.3.4 | Bug fix | 3d? | 2013-12-25 | 2013-12-27 |  |  | 2d | finish no earlier than 2013-12-27 |  |  |  |
| 226 | 7.3.5 | Retest fixed bugs | 23d? | 2013-11-20 | 2013-12-20 |  |  | 7d | start no earlier than 2013-11-20 |  |  |  |
| 227 | 7.4 | Done Intergration/Function test | 1d? | 2013-12-31 | 2013-12-31 |  |  | 0d | start no earlier than 2013-12-31 |  |  |  |
| 228 | 8 | **Software Documenting** | 15d? | 2013-12-02 A | 2013-12-20 | 68% | 4.74d? | 7d |  |  | 72h | 32h |
| 229 | 8.1 | **Code Reference Guide** | 5d? | 2013-12-16 A | 2013-12-20 A | 100% |  |  |  |  | 8h | 8h |
| 230 | 8.1.1 | Update comments in code | 2d? | 2013-12-16 A | 2013-12-17 A | 100% |  |  | finish no earlier than 2013-12-17 |  |  |  |
| 231 | 8.1.2 | Create a HTML version in CMS page | 1d? | 2013-12-17 A | 2013-12-17 A | 100% |  |  | start no earlier than 2013-12-17 | Ric Ly | 8h | 8h |
| 232 | 8.1.3 | Make a PDF version | 2d? | 2013-12-19 A | 2013-12-20 A | 100% |  |  | start no earlier than 2013-12-19 |  |  |  |
| 233 | 8.2 | Finish Code Reference Guide | 1d? | 2013-12-17 A | 2013-12-17 A | 100% |  |  | start no earlier than 2013-12-17 |  |  |  |
| 234 | 8.3 | **Diagrams** | 15d? | 2013-12-02 A | 2013-12-20 | 58% | 6.25d? | 7d |  |  | 64h | 24h |
| 235 | 8.3.1 | Class Diagrams (MS SQL) | 5d | 2013-12-02 | 2013-12-06 |  |  | 17d | finish no earlier than 2013-12-06 | Tuan Nguyen | 40h |  |
| 236 | 8.3.2 | Web service report | 2d? | 2013-12-17 A | 2013-12-18 A | 100% |  |  | start no earlier than 2013-12-17 |  |  |  |
| 237 | 8.3.3 | Export all diagram to pdf or doc | 2d? | 2013-12-17 A | 2013-12-18 A | 100% |  |  | start no earlier than 2013-12-17 |  |  |  |
| 238 | 8.3.4 | Gather all documents and store | 3d? | 2013-12-18 A | 2013-12-20 A | 100% |  |  | start no earlier than 2013-12-18 | Tin Nguyen | 24h | 24h |
| 239 | 8.4 | Finish Diagrams | 1d? | 2013-12-18 | 2013-12-18 |  |  | 9d | start no earlier than 2013-12-18 |  |  |  |
| 240 | 9 | **Wrap-up the project** | 5d? | 2013-12-23 | 2013-12-27 |  |  | 2d |  |  |  |  |
| 241 | 9.1 | Create directory for storing the project on server | 5d? | 2013-12-23 | 2013-12-27 |  |  | 2d | finish no earlier than 2013-12-27 |  |  |  |
| 242 | 9.2 | **Source code** | 5d? | 2013-12-23 | 2013-12-27 |  |  | 2d |  |  |  |  |
| 243 | 9.2.1 | Organize all the pages | 5d? | 2013-12-23 | 2013-12-27 |  |  | 2d | finish no earlier than 2013-12-27 |  |  |  |
| 244 | 9.2.2 | Make backups | 5d? | 2013-12-23 | 2013-12-27 |  |  | 2d | finish no earlier than 2013-12-27 |  |  |  |
| 245 | 9.2.3 | Record Subversion info | 5d? | 2013-12-23 | 2013-12-27 |  |  | 2d | finish no earlier than 2013-12-27 |  |  |  |
| 246 | 9.2.4 | Make zip files | 5d? | 2013-12-23 | 2013-12-27 |  |  | 2d | finish no earlier than 2013-12-27 |  |  |  |
| 247 | 9.2.5 | Upload to server | 5d? | 2013-12-23 | 2013-12-27 |  |  | 2d | finish no earlier than 2013-12-27 |  |  |  |

Notes:
- 230: Write along with coding / Always push and remind developers to put their comments in code
- 231: This HTML version will be update along with code developing time. / to use this: logon to CMS page at: http://homecareweb.no-ip.org/cms

| ID | WBS | Task | Duration | Start | Finish | Total slack | Constraint |
| --- | --- | --- | --- | --- | --- | --- | --- |
| 248 | 9.3 | **Database** | 5d? | 2013-12-23 | 2013-12-27 | 2d |  |
| 249 | 9.3.1 | Export data | 5d? | 2013-12-23 | 2013-12-27 | 2d | finish no earlier than 2013-12-27 |
| 250 | 9.3.2 | Make backup data | 5d? | 2013-12-23 | 2013-12-27 | 2d | finish no earlier than 2013-12-27 |
| 251 | 9.3.3 | Upload to server | 5d? | 2013-12-23 | 2013-12-27 | 2d | finish no earlier than 2013-12-27 |
| 252 | 9.4 | **Documents** | 5d? | 2013-12-23 | 2013-12-27 | 2d |  |
| 253 | 9.4.1 | Gather all kinds of document | 5d? | 2013-12-23 | 2013-12-27 | 2d | start no earlier than 2013-12-23 |
| 254 | 9.4.2 | Upload to server | 5d? | 2013-12-23 | 2013-12-27 | 2d | start no earlier than 2013-12-23 |
| 255 | 9.5 | Done Wrap-up | 1d? | 2013-12-27 | 2013-12-27 | 2d | start no earlier than 2013-12-27 |
